# OFFICE-FITOUT

Schedule from Primavera P6, 2026-03-02 to 2026-04-03, data date 2026-04-06, A marks actual dates.
Must finish by 2026-07-31

## Calendars

- 5 day, 07:00-15:30: Mon-Fri 07:00-11:00, 11:30-15:30; Sat-Sun off.

## Schedule

| ID | Activity | Type | Duration | Start | Finish | Predecessors | Complete | Remaining | Planned finish | Constraint |
| --- | --- | --- | --- | --- | --- | --- | --- | --- | --- | --- |
| M1000 | Notice to proceed | milestone | 0d | 2026-03-02 A | 2026-03-02 A |  | 100% |  |  |  |
| A1010 | Site survey and as-built check |  | 3d | 2026-03-02 A | 2026-03-05 A | M1000 | 100% |  | 2026-03-05 |  |
| A1020 | Shop drawings: partitions and ceilings |  | 10d | 2026-03-05 A | 2026-03-20 A | A1010 | 100% |  | 2026-03-19 |  |
| A1030 | Submittal review |  | 10d | 2026-03-23 A | 2026-04-02 | A1020 | 60% | 4d | 2026-04-02 |  |
| A1040 | Procure doors and hardware |  | 50d |  |  | A1030 |  |  |  |  |
| A1050 | Demolition, level 1 |  | 5d | 2026-03-30 A | 2026-04-03 | M1000 FS+15d | 40% | 3d | 2026-04-03 |  |
| A1060 | Demolition, level 2 |  | 5d |  |  | A1050 SS+3d |  |  |  |  |
| A1070 | Layout and track, level 1 |  | 4d |  |  | A1050, A1030 |  |  |  |  |
| A1080 | Layout and track, level 2 |  | 4d |  |  | A1060 |  |  |  |  |
| A1090 | MEP rough-in, level 1 |  | 12d |  |  | A1070 FS-2d |  |  |  |  |
| A1100 | MEP rough-in, level 2 |  | 12d |  |  | A1080 |  |  |  |  |
| A1110 | Inspection: in-wall rough-in |  | 1d |  |  | A1090, A1100 |  |  |  | start on 2026-05-18 |
| A1120 | Board and tape, level 1 |  | 8d |  |  | A1110 |  |  |  |  |
| A1130 | Board and tape, level 2 |  | 8d |  |  | A1110 |  |  |  |  |
| A1140 | Ceiling grid and tile |  | 10d |  |  | A1120, A1130 |  |  |  |  |
| A1150 | Paint |  | 8d |  |  | A1140 |  |  |  |  |
| A1160 | Flooring |  | 7d |  |  | A1150 |  |  |  |  |
| A1170 | Hang doors and hardware |  | 4d |  |  | A1160, A1040 |  |  |  |  |
| A1180 | Furniture install (by owner) |  | 5d |  |  | A1160 FS+10d |  |  |  |  |
| A1190 | Signage |  | 2d |  |  | A1150 SS+2d |  |  |  |  |
| A1200 | Punch list |  | 5d |  |  | A1170 |  |  |  |  |
| M1210 | Substantial completion | milestone | 0d |  |  | A1200 |  |  |  |  |
